# 中联泰国园区DCOM平台项目

Schedule from a web Gantt chart, 2025-12-29 to 2026-10-30.
Every day is a working day

## Schedule

| ID | WBS | Task | Type | Duration | Start | Finish | Predecessors | inPeople | Status |
| --- | --- | --- | --- | --- | --- | --- | --- | --- | --- |
| 2 | 1 | DCOM系统合同签订 |  | 12d | 2026-01-01 | 2026-01-12 |  | 张意&杨玉 | waiting |
| 3 | 2 | 项目立项启动及启动会议 |  | 2d | 2026-01-13 | 2026-01-14 | 2 | 赵红光 | waiting |
| 4 | 3 | DCOM系统硬件设备采购 |  | 20d | 2026-01-13 | 2026-02-01 | 2 | 张意&杨玉 | waiting |
| 5 | 4 | 硬件设备发货及海运报关 |  | 30d | 2026-02-02 | 2026-03-03 | 4 | 张意&杨玉 | waiting |
| 6 | 5 | 园区网络施工及设备安装 |  | 7d | 2026-03-04 | 2026-03-10 | 5 | 熊瀛 | waiting |
| 7 | 6 | 园区网络及设备调试 |  | 5d | 2026-03-11 | 2026-03-15 | 6 | 赵红光&熊瀛 | waiting |
| 8 | 7 | DCOM平台环境部署 |  | 5d | 2026-03-16 | 2026-03-20 | 7 | 谢水根&朱星 | waiting |
| 9 | 8 | 机房楼系统交付（一期-D1楼） | fixed start | 92d | 2025-12-29 | 2026-03-30 |  | 周全（项目经理） |  |
| 10 | 9 | 机房楼系统交付（二期-D1楼） | fixed start | 153d | 2025-12-29 | 2026-05-30 |  | 周全（项目经理） |  |
| 11 | 10 | 机房楼系统交付（D2楼） |  | 1d | 2025-12-30 | 2025-12-30 |  | 派诺 |  |
| 12 | 11 | DCOM平台南向数据接入（一期-D1楼） |  | 7d | 2026-03-31 | 2026-04-06 | 9 | 赵红光&熊瀛 | waiting |
| 13 | 12 | DCOM平台南向数据接入（二期-D1楼） |  | 7d | 2026-05-31 | 2026-06-06 | 10 | 赵红光&熊瀛 | waiting |
| 14 | 13 | DCOM平台数据上线（一期-D1楼） |  | 10d | 2026-04-07 | 2026-04-16 | 12 | 赵红光&熊瀛 | waiting |
| 15 | 14 | DCOM平台数据上线（二期-D1楼） |  | 10d | 2026-06-07 | 2026-06-16 | 13 | 赵红光&熊瀛 | waiting |
| 16 | 15 | DCOM北向数据上传（一期-D1楼） |  | 20d | 2026-04-07 | 2026-04-26 | 12 | 赵红光&熊瀛 | waiting |
| 17 | 16 | DCOM北向数据上传（二期-D1楼） |  | 20d | 2026-06-07 | 2026-06-26 | 13 | 赵红光&熊瀛 | waiting |
| 18 | 17 | DCOM平台北向数据验收（一期-D1楼） |  | 5d | 2026-04-27 | 2026-05-01 | 16 | 赵红光&熊瀛 | waiting |
| 19 | 18 | DCOM平台北向数据验收（二期-D1楼） |  | 5d | 2026-06-27 | 2026-07-01 | 17 | 赵红光&熊瀛 | waiting |
| 20 | 19 | DCOM平台监控功能上线（一期-D1楼） |  | 5d | 2026-04-17 | 2026-04-21 | 14 | 赵红光&熊瀛 | waiting |
| 21 | 20 | DCOM平台监控功能上线（二期-D1楼） |  | 5d | 2026-06-17 | 2026-06-21 | 15 | 赵红光&熊瀛 | waiting |
| 22 | 21 | DCOM平台访客功能上线 |  | 127d | 2026-02-24 | 2026-06-30 |  | 赵红光&谢水根 |  |
| 23 | 22 | DCOM平台运维功能开发 |  | 1d | 2025-12-30 | 2025-12-30 |  | 赵红光&谢水根 |  |
| 24 | 23 | DCOM平台功能阶段性交付（1阶段） |  | 127d | 2026-02-24 | 2026-06-30 |  | 赵红光&谢水根 |  |
| 25 | 24 | DCOM平台功能阶段性交付（2阶段） |  | 62d | 2026-06-30 | 2026-08-30 |  |  |  |
| 26 | 25 | DCOM平台功能阶段性交付（3阶段） |  | 60d | 2026-09-01 | 2026-10-30 |  |  |  |
| 27 | 26 | DCOM平台验收测试 |  | 1d | 2026-10-26 | 2026-10-26 |  | 赵红光&谢水根 |  |
| 28 | 27 | DCOM平台培训及验收 |  | 1d | 2025-12-30 | 2025-12-30 |  | 赵红光&谢水根 |  |

Notes:
- 9: 预计2026/03/30交付；
- 10: 预计2026/05/30交付；
- 11: 预计2026/05/30交付；
- 12: 按机房楼系统交付（1#楼）后T+7天考虑
- 13: 按机房楼系统交付（1#楼）后T+7天考虑
- 14: DCOM平台南向数据接入（1#楼）后T+10天考虑
- 15: DCOM平台南向数据接入（1#楼）后T+10天考虑
- 16: 按DCOM平台南向数据接入（1#楼）完成T+20天计划，完成北向数据上传的配置及数据推送，数据核对和相关测试
- 17: 按DCOM平台南向数据接入（1#楼）完成T+20天计划，完成北向数据上传的配置及数据推送，数据核对和相关测试
- 18: 按数据北向推送后T+5天计划，完成北向数据治理及数据验收
- 19: 按数据北向推送后T+5天计划，完成北向数据治理及数据验收
- 22: 详见开发任务进度计划表
- 23: 详见开发任务进度计划表
- 24: 详见开发任务进度计划表
